# Metasepi Project

Schedule from Planner, 2014-05-12 to 2015-11-18.

## Calendars

- デフォルト: Mon-Fri 08:00-12:00, 13:00-17:00; Sat-Sun off.

## Schedule

| ID | WBS | Task | Type | Duration | Start | Finish | Predecessors | Constraint | Work |
| --- | --- | --- | --- | --- | --- | --- | --- | --- | --- |
| 1 | 1 | **ATS demo on tiny CPU** |  |  | 2014-05-12 | 2014-05-26 |  |  | 88h |
| 2 | 1.1 | AVR support to ATS |  |  | 2014-05-12 | 2014-05-20 |  |  | 51h |
| 3 | 1.2 | ARM support to ATS |  |  | 2014-05-20 | 2014-05-26 | 2 |  | 37h |
| 4 | 2 | **Translate ATS doc** |  |  | 2014-05-12 | 2015-09-30 |  |  | 2896.5h |
| 5 | 2.1 | ATS2TUTORIAL |  |  | 2014-05-12 | 2014-05-26 |  |  | 88h |
| 6 | 2.2 | INT2PROGINATS |  |  | 2014-05-27 | 2014-06-20 | 5 |  | 152h |
| 7 | 2.3 | ATS Paper |  |  | 2014-06-23 | 2014-08-12 | 6 |  | 291.5h |
| 8 | 2.4 | Wiki |  |  | 2014-08-12 | 2014-09-02 | 7 |  | 124.5h |
| 9 | 2.5 | BLUISH CODER |  |  | 2014-09-03 | 2015-08-17 | 8 |  | 1988.5h |
| 10 | 2.6 | DML Paper |  |  | 2015-08-17 | 2015-09-30 | 9 |  | 252h |
| 11 | 3 | **Translate Metasepi blog** |  |  | 2014-05-27 | 2014-08-22 | 5 |  | 512h |
| 12 | 3.1 | Translate past entries |  |  | 2014-05-27 | 2014-08-22 |  |  | 512h |
| 13 | 4 | OSC@Nagoya | milestone | 0d | 2014-07-04 | 2014-07-04 |  | must start on 2014-07-04 |  |
| 14 | 5 | OSC@Kansai | milestone | 0d | 2014-08-01 | 2014-08-01 |  | must start on 2014-08-01 |  |
| 15 | 6 | Haskell Symposium | milestone | 0d | 2014-09-04 | 2014-09-04 | 11 | must start on 2014-09-04 |  |
| 16 | 7 | OSC@Tokyo | milestone | 0d | 2014-10-20 | 2014-10-18 |  | must start on 2014-10-18 |  |
| 17 | 8 | **Lifegame on FSM-55** |  |  | 2014-10-20 | 2015-01-22 | 16 |  | 552h |
| 18 | 8.1 | Setup gdbserver |  |  | 2014-10-20 | 2014-11-07 |  |  | 120h |
| 19 | 8.2 | Snatch FSM-55 |  |  | 2014-11-10 | 2015-01-02 | 18 |  | 320h |
| 20 | 8.3 | Lifegame on FSM-55 |  |  | 2015-01-05 | 2015-01-22 | 19 |  | 112h |
| 21 | 9 | Paper for PPL 2015 | milestone | 0d | 2015-01-23 | 2015-01-23 | 19 | must start on 2015-01-23 |  |
| 22 | 10 | **FSM-55 from PCB** |  |  | 2014-10-20 | 2015-01-30 | 16 |  | 600h |
| 23 | 10.1 | Prepare the parts |  |  | 2014-10-20 | 2014-11-25 |  |  | 216h |
| 24 | 10.2 | Understand reflow |  |  | 2014-11-26 | 2014-12-09 | 23 |  | 80h |
| 25 | 10.3 | Make some boards |  |  | 2014-12-10 | 2015-01-23 | 24 |  | 264h |
| 26 | 10.4 | Schedule fpiot meetup |  |  | 2015-01-26 | 2015-01-30 | 25 |  | 40h |

| ID | WBS | Task | Type | Duration | Start | Finish | Predecessors | Constraint | Work |
| --- | --- | --- | --- | --- | --- | --- | --- | --- | --- |
| 27 | 11 | **1wire protocol** |  |  | 2015-02-02 | 2015-05-20 | 22, 17 |  | 624h |
| 28 | 11.1 | Hardware design |  |  | 2015-02-02 | 2015-02-13 |  |  | 80h |
| 29 | 11.2 | Single network |  |  | 2015-02-16 | 2015-03-03 | 28 |  | 96h |
| 30 | 11.3 | Sequence network |  |  | 2015-03-04 | 2015-05-20 | 29 |  | 448h |
| 31 | 12 | Demo at PPL 2015 | milestone | 0d | 2015-03-04 | 2015-03-04 | 29 | must start on 2015-03-04 |  |
| 32 | 13 | OSC 2015 Nagoya | milestone | 0d | 2015-05-22 | 2015-05-22 | 30 | must start on 2015-05-22 |  |
| 33 | 14 | **Setup to snatch Linux** |  |  | 2015-03-04 | 2015-05-15 | 29 |  | 424h |
| 34 | 14.1 | Setup raspberrypi |  |  | 2015-03-04 | 2015-04-17 |  |  | 264h |
| 35 | 14.2 | Setup ATS config |  |  | 2015-04-20 | 2015-05-01 | 34 |  | 80h |
| 36 | 14.3 | Choose snatch target |  |  | 2015-05-04 | 2015-05-15 | 35 |  | 80h |
| 37 | 15 | OSC 2015 Hokkaido | milestone | 0d | 2015-06-12 | 2015-06-12 | 33 | must start on 2015-06-12 |  |
| 38 | 16 | **プログラミングの基礎 on ATS** |  |  | 2015-05-21 | 2015-10-21 | 27 |  | 880h |
| 39 | 16.1 | In Japanese |  |  | 2015-05-21 | 2015-09-23 |  |  | 720h |
| 40 | 16.2 | Plan in English |  |  | 2015-09-24 | 2015-10-21 | 39 |  | 160h |
| 41 | 17 | **Square network** |  |  | 2015-05-18 | 2015-09-21 | 33 |  | 728h |
| 42 | 17.1 | Hardware design |  |  | 2015-05-18 | 2015-06-26 |  |  | 240h |
| 43 | 17.2 | Single network |  |  | 2015-06-29 | 2015-08-07 | 42 |  | 240h |
| 44 | 17.3 | Network simulator |  |  | 2015-08-10 | 2015-09-18 | 43 |  | 240h |
| 45 | 17.4 | Multiple network |  |  | 2015-09-21 | 2015-09-21 | 44 |  | 8h |
| 46 | 18 | **ATS package manager** |  |  | 2015-09-22 | 2015-10-21 | 41 |  | 176h |
| 47 | 18.1 | Understand opam design |  |  | 2015-09-22 | 2015-10-12 |  |  | 120h |
| 48 | 18.2 | Get design for ATS |  |  | 2015-10-13 | 2015-10-21 | 47 |  | 56h |
| 49 | 19 | Parsec on ATS |  |  | 2015-10-22 | 2015-11-18 | 46 |  | 160h |
